# Антибот внедрение Отели + исследование внедрение вертикали 260925 - для расчетов загрузки

Schedule from MS Project, 2026-04-23 to 2026-08-24, A marks actual dates.

## Calendars

- Стандартный: Mon-Fri 09:00-13:00, 14:00-18:00; Sat-Sun off. Exceptions (off unless hours are given): 2026-05-01 (1 мая 26), 2026-05-08 09:00-13:00, 14:00-17:00 (8 мая короткий), 2026-05-11 (9 мая 26), 2026-06-12 (12 июня 26).

## Resources

| Resource |
| --- |
| Жиров |
| Платформа аналитики |
| SEO |
| Отели |
| Аралов |
| DS (аналитик с ML) |
| СА проекты |
| Криворотов |
| Ткаченко |
| Аналитик СКД |
| Безверхов |
| Белов |
| DataTeam |
| Пляскин |
| Тим-лид DataTeam |
| Середа |
| Хусаинова |
| Дашкевич |
| ПХусаинова |
| Инфраструктура DataTeam |
| Тимофеев |
| Котельникова |
| Сальникова |
| Бичев |
| Галашов |
| Денис Малый, продакты Авиа и горизонталей, аналитики Авиа и горизонталей |
| Продакты Авиа и горизонталей |
| Денис Малый |
| Денис Малый, аналитики Авиа и горизонталей |
| Денис Малый, Юрий Гладких |
| Денис Малый, продакты бизнес-юнитов |
| Денис Малый, Вера Белоярская, Павел Пляскин |
| Денис Малый, Юрий Гладких, Никита Лысенко |
| Никита Лысенко |
| Юрий Гладких |
| Денис Малый, Илья Середа |
| Денис Малый, аналитики бизнес-юнитов |
| Денис Малый, продакты бизнес-юнитов, аналитики бизнес-юнитов |
| Денис Малый, data team |
| Денис Малый, Александр Жиров |
| Денис Малый, Елена Цветкова |
| Малый |
| Арут |
| Попков |
| DevOps |
| Data Engineer |
| Experiment Owner |
| Разработчик |
| TL |
| ПрПродукты |
| Продукты |
| Продуктовый аналитик |
| Разработчик пилот |
| Продуктовый аналитик пилот |
| DevOps пилот |
| Data Engineer пилот |
| Жиров пилот |
| DevOps Тимлид пилот |
| Скоморохов |
| Попков/Гладких |
| Попков/Гладких пилот |
| Работы DWH |
| Малый, Гладких, Попков, Консультации Илья |
| Малый, Гладких, Попков, Консультации Илья, Скоморохов М, Цыба Л. |
| Юрченко Илья |
| Mobile Core |

## Schedule

| ID | WBS | Task | Type | Duration | Start | Finish | Predecessors | Complete | Remaining | Baseline start | Baseline finish | Baseline duration | Total slack | Free slack | Constraint | Resources | Work | Actual work | Baseline cost |
| --- | --- | --- | --- | --- | --- | --- | --- | --- | --- | --- | --- | --- | --- | --- | --- | --- | --- | --- | --- |
| 1 | 1 | **Исследование и внедрение AB-платформы Trisigma** |  | 84.88d | 2026-04-23 A | 2026-08-24 |  | 3% | 82.66d | 2026-04-23 | 2026-09-07 | 94.88d | 0d |  |  |  | 1576h | 40h |  |
| 2 | 1.1 | Договор согласован, Вендор передал ПО и лицензии | milestone | 0d | 2026-04-27 | 2026-04-27 |  |  |  | 2026-04-27 | 2026-04-27 | 0d | 82.88d |  | start no earlier than 2026-04-27 |  |  |  |  |
| 3 | 1.2 | Согласован старт проектных работ Пилот, ресурсы выделены | milestone | 0d | 2026-04-23 | 2026-04-23 |  |  |  | 2026-04-23 | 2026-04-23 | 0d | 35.88d | 0d | start no earlier than 2026-04-23 |  |  |  |  |
| 4 | 1.3 | **POC Внедрение и пилотирование новой платформы AB-тестирования Trisigma** |  | 84.88d | 2026-04-23 A | 2026-08-24 |  | 3% | 82.66d | 2026-04-23 | 2026-09-07 | 94.88d | 0d |  |  |  | 1576h | 40h |  |
| 5 | 1.3.1 | **Работы по настройке аналитики (от ПА) - 2 продукта** |  | 42.88d | 2026-04-23 | 2026-06-25 |  |  |  | 2026-04-23 | 2026-07-09 | 52.88d | 17d |  |  |  | 80h |  |  |
| 6 | 1.3.1.1 | Описание метрик в confluence (4 дня) |  | 4d | 2026-04-23 | 2026-04-28 | 3 |  |  | 2026-04-23 | 2026-04-28 | 4d | 49.88d | 32.88d |  | Продуктовый аналитик пилот | 32h |  |  |
| 7 | 1.3.1.2 | Адаптация и обучение (1 день) |  | 2d | 2026-06-18 | 2026-06-19 | 6, 35 |  |  | 2026-07-02 | 2026-07-03 | 2d | 17d | 0d |  | Продуктовый аналитик пилот | 16h |  |  |
| 8 | 1.3.1.3 | Занесение метрик в config trisigma |  | 2d | 2026-06-22 | 2026-06-23 | 7 |  |  | 2026-07-06 | 2026-07-07 | 2d | 17d | 0d |  | Продуктовый аналитик пилот | 16h |  |  |
| 9 | 1.3.1.4 | Настройка платформы под свой продукт (2 дня) |  | 2d | 2026-06-24 | 2026-06-25 | 8 |  |  | 2026-07-08 | 2026-07-09 | 2d | 17d |  |  | Продуктовый аналитик пилот | 16h |  |  |
| 10 | 1.3.2 | **Исследование и решение (PoC)** |  | 5d | 2026-04-23 | 2026-04-29 |  |  |  | 2026-04-23 | 2026-04-29 | 5d | 43.88d |  |  |  | 40h |  |  |
| 11 | 1.3.2.1 | Выявление и согласование критериев успешности PoC |  | 5d | 2026-04-23 | 2026-04-29 | 3 |  |  | 2026-04-23 | 2026-04-29 | 5d | 43.88d | 0d |  | Жиров пилот | 40h |  |  |
| 12 | 1.3.2.2 | Объем тестовых работ для PoC определен | milestone | 0d | 2026-04-29 | 2026-04-29 | 11 |  |  | 2026-04-29 | 2026-04-29 | 0d | 43.88d |  |  |  |  |  |  |
| 13 | 1.3.3 | **Установка базовой инфраструктуры** |  | 10d | 2026-04-23 A | 2026-05-07 |  | 50% | 5d | 2026-04-23 | 2026-05-07 | 10d | 68.88d |  |  |  | 80h | 40h |  |
| 14 | 1.3.3.1 | Развертывание отдельной инфраструктуры | milestone, inactive | 0d | 2026-04-23 | 2026-04-23 | 3 |  |  |  |  |  | 84.88d |  |  | Скоморохов |  |  | -0 |
| 15 | 1.3.3.2 | 1.0.Согласование архитектуры на пилот |  | 5d | 2026-04-23 | 2026-04-29 | 3 |  |  | 2026-04-23 | 2026-04-29 | 5d | 35.88d | 0d |  | Попков/Гладких пилот | 40h |  |  |
| 16 | 1.3.3.3 | 1.1 Подготовка registry и Kubernetes runtime |  | 3d | 2026-04-30 A | 2026-05-05 A | 14, 2, 15 | 100% |  | 2026-04-30 | 2026-05-05 | 3d |  |  |  | Попков/Гладких пилот | 24h | 24h |  |
| 17 | 1.3.3.4 | 1.2 Подготовка внешних зависимостей |  | 2d | 2026-05-06 A | 2026-05-07 A | 16 | 100% |  | 2026-05-06 | 2026-05-07 | 2d |  |  |  | Попков/Гладких пилот | 16h | 16h |  |
| 18 | 1.3.4 | **Установка аналитических сервисов** |  | 19d | 2026-05-12 | 2026-06-05 |  |  |  | 2026-05-12 | 2026-06-05 | 19d | 0d |  |  |  | 152h |  |  |
| 19 | 1.3.4.1 | 2.1 Развёртывание Hive Metastore, Trino и базовых каталогов |  | 5d | 2026-05-12 | 2026-05-18 | 17 |  |  | 2026-05-12 | 2026-05-18 | 5d | 0d |  | start no earlier than 2026-05-12 | Работы DWH | 40h |  |  |
| 20 | 1.3.4.2 | 2.1 Развёртывание Hive Metastore, Trino и базовых каталогов |  | 2d | 2026-05-19 | 2026-05-20 | 19 |  |  | 2026-05-19 | 2026-05-20 | 2d | 0d |  |  | Попков/Гладких пилот | 16h |  |  |
| 21 | 1.3.4.3 | 2.2 Подключение бизнес-данных, схем и прав доступа в Trino |  | 2d | 2026-05-21 | 2026-05-22 | 20 |  |  | 2026-05-21 | 2026-05-22 | 2d | 0d |  |  | Попков/Гладких пилот | 16h |  |  |
| 22 | 1.3.4.4 | 2.3 Подготовка данных UW для Trisigma |  | 10d | 2026-05-25 | 2026-06-05 | 21 |  |  | 2026-05-25 | 2026-06-05 | 10d | 0d |  |  | Попков/Гладких пилот | 80h |  |  |
| 23 | 1.3.5 | **Установка прикладных сервисов** |  | 8d | 2026-05-19 | 2026-05-28 |  |  |  | 2026-06-08 | 2026-06-18 | 8d | 4d |  |  |  | 64h |  |  |
| 24 | 1.3.5.1 | 3.1 Развёртывание Airflow |  | 2d | 2026-05-19 | 2026-05-20 | 19 |  |  | 2026-06-08 | 2026-06-09 | 2d | 4d | 0d |  | Попков/Гладких пилот | 16h |  |  |
| 25 | 1.3.5.2 | 3.2 Развёртывание Configurator |  | 2d | 2026-05-21 | 2026-05-22 | 24 |  |  | 2026-06-10 | 2026-06-11 | 2d | 4d | 0d |  | Попков/Гладких пилот | 16h |  |  |
| 26 | 1.3.5.3 | 3.3 Развёртывание Splitter |  | 2d | 2026-05-25 | 2026-05-26 | 25 |  |  | 2026-06-15 | 2026-06-16 | 2d | 4d | 0d |  | Попков/Гладких пилот | 16h |  |  |
| 27 | 1.3.5.4 | 3.4 Развёртывание Frontend и внешних endpoint'ов |  | 2d | 2026-05-27 | 2026-05-28 | 26 |  |  | 2026-06-17 | 2026-06-18 | 2d | 4d | 0d |  | Попков/Гладких пилот | 16h |  |  |

Notes:
- 8: Text2: с 15.05.26 возможно занесение метрик
- 15: Text2: Согласовать то, что будет приниматься в конце и консультации Илья
- 16: Text2: Создать container registry клиента, загрузить туда release-образы Trisigma и проверить, что Kubernetes может их вытягивать; настроить namespace'ы, service account'ы, ingress/TLS, механизм доставки секретов, storage class'ы и сетевые правила между сервисам
- 17: Text2: Создать отдельные PostgreSQL БД для Configurator, Splitter, Airflow и Hive Metastore, выделить Redis для Configurator и Airflow, подготовить ClickHouse и S3-совместимые бакеты
- 20: Text2: Установить Hive Metastore и Trino, подключить PostgreSQL и S3 credentials, настроить каталоги iceberg, hive и clickhouse, проверить сохранение метаданных и доступ к Hive Metastore, S3 и ClickHouse
- 21: Text2: Создать JDBC-каталог к клиентской БД, открыть сетевой доступ, завести read-only/service account, проверить каталоги и принятые префиксы для Iceberg/Hive/ClickHouse, создать рабочие схемы в каталоге клиента для аналитики и служебных данных, настроить серви
- 24: Text2: Установить Airflow с CeleryExecutor, подключить metadata DB и внешний Redis / Valkey broker, настроить S3-бакеты для логов и DAG-конфигов, развернуть configs-uploader, проверить базовую работоспособность и готовность принимать DAG-конфиги
- 25: Text2: Установить Helm-чарт, выполнить PostgreSQL-миграции и миграции ClickHouse, настроить связи с Trino и Airflow
- 26: Text2: Установить Helm-чарт, выполнить миграции, настроить интеграцию с Configurator через пару CONFIGURATION_TOKEN/SPLITTER_TOKEN, включить watchers конфигов и override'ов, проверить getFeaturesByTag и отправку событий
- 27: Text2: Установить Frontend, опубликовать UI и API endpoint'ы, связать frontend с Configurator и проверить доступ аналитиков к интерфейсу

| ID | WBS | Task | Type | Duration | Start | Finish | Predecessors | Baseline start | Baseline finish | Baseline duration | Total slack | Free slack | Constraint | Resources | Work |
| --- | --- | --- | --- | --- | --- | --- | --- | --- | --- | --- | --- | --- | --- | --- | --- |
| 28 | 1.3.6 | **Интеграции сервисов** |  | 9d | 2026-05-29 | 2026-06-10 |  | 2026-06-19 | 2026-06-25 | 5d | 0d |  |  |  | 40h |
| 29 | 1.3.6.1 | 4.1 Настройка аутентификации и ролей |  | 2d | 2026-05-29 | 2026-06-01 | 27 | 2026-06-19 | 2026-06-22 | 2d | 4d |  |  | Попков/Гладких пилот | 16h |
| 30 | 1.3.6.2 | 4.2 Настройка эксплуатационного контура |  | 3d | 2026-06-08 | 2026-06-10 | 29, 22 | 2026-06-23 | 2026-06-25 | 3d | 0d |  |  | Попков/Гладких пилот | 24h |
| 31 | 1.3.7 | **Проверка и ввод в эксплуатацию** |  | 2d | 2026-06-11 | 2026-06-15 |  | 2026-06-26 | 2026-06-29 | 2d | 0d |  |  |  | 16h |
| 32 | 1.3.7.1 | 5.1 Проведение технического smoke test |  | 2d | 2026-06-11 | 2026-06-15 | 30 | 2026-06-26 | 2026-06-29 | 2d | 0d |  |  | Продуктовый аналитик пилот | 16h |
| 33 | 1.3.8 | **Настройка системы внутри платформы** |  | 2d | 2026-06-16 | 2026-06-17 |  | 2026-06-30 | 2026-07-01 | 2d | 0d |  |  |  | 16h |
| 34 | 1.3.8.1 | 6.1 Заведение роутов, проверка, корретировка CPU, RAM |  | 2d | 2026-06-16 | 2026-06-17 | 32 | 2026-06-30 | 2026-07-01 | 2d | 0d |  |  | Попков/Гладких пилот | 16h |
| 35 | 1.3.9 | Платформа trisigma настроена и готова к заведению метрик | milestone | 0d | 2026-06-17 | 2026-06-17 | 34 | 2026-07-01 | 2026-07-01 | 0d | 17d | 0d |  |  |  |
| 36 | 1.3.10 | **Проведение 3х реальных экспериментов для оценки системы** |  | 23d | 2026-06-18 | 2026-07-20 |  | 2026-07-02 | 2026-08-03 | 23d | 0d |  |  |  | 256h |
| 37 | 1.3.10.1 | 7.1 Подготовка go sdk вендора к сервисам двух продуктов |  | 2d | 2026-06-18 | 2026-06-19 | 34 | 2026-07-02 | 2026-07-03 | 2d | 0d |  |  | Попков/Гладких пилот | 16h |
| 38 | 1.3.10.2 | 7.1 Подключение go sdk вендора к сервисам двух продуктов |  | 4d | 2026-06-22 | 2026-06-25 | 37 | 2026-07-06 | 2026-07-09 | 4d | 6d |  |  | Разработчик пилот | 32h |
| 39 | 1.3.10.3 | Доработка функционала для работы Trisigma (вкладка расчет функционала) |  | 10d | 2026-06-22 | 2026-07-03 | 37 | 2026-07-06 | 2026-07-17 | 10d | 0d |  |  | Попков/Гладких пилот | 80h |
| 40 | 1.3.10.4 | 7.2 Проведение 3х A-A-B экспериментов на продукте |  | 3d | 2026-07-06 | 2026-07-08 | 12, 38, 39 | 2026-07-20 | 2026-07-22 | 3d | 0d |  |  | Разработчик пилот | 24h |
| 41 | 1.3.10.5 | 7.3 Подведение итогов по экспериментам, сравнение результатов |  | 3d | 2026-07-09 | 2026-07-13 | 40 | 2026-07-23 | 2026-07-27 | 3d | 0d |  |  | Продуктовый аналитик пилот | 24h |
| 42 | 1.3.10.6 | 7.4 Оценка метрик, доработки вовремя и после запуска, помощь в сравнении результатов, подведение технических итогов |  | 5d | 2026-07-14 | 2026-07-20 | 41 | 2026-07-28 | 2026-08-03 | 5d | 0d |  |  | Малый; Попков/Гладких пилот | 80h |
| 43 | 1.3.11 | **Подведение итогов тестирования платформы PoC** |  | 3d | 2026-07-10 | 2026-07-14 |  | 2026-07-24 | 2026-07-28 | 3d | 24d |  |  |  | 32h |
| 44 | 1.3.11.1 | 8.1 Подведение итогов PoC, сравнение ожиданий и реальности, оформление выводов |  | 2d | 2026-07-10 | 2026-07-13 | 40FS+1d | 2026-07-24 | 2026-07-27 | 2d | 24d | 0d |  | Малый | 16h |
| 45 | 1.3.11.2 | 8.2 Принятие решения по полноценному тестированию |  | 1d | 2026-07-14 | 2026-07-14 | 44 | 2026-07-28 | 2026-07-28 | 1d | 24d |  |  | Малый | 8h |
| 46 | 1.3.11.3 | 8.3 Принятие решений по архитектуре, корректировка планов полного внедрения |  | 1d | 2026-07-14 | 2026-07-14 | 44, 15 | 2026-07-28 | 2026-07-28 | 1d | 24d |  |  | Малый, Гладких, Попков, Консультации Илья | 8h |
| 47 | 1.3.12 | **Проведение тестовых AB-компаний на согласованных вертикалях, фиксация решения** |  | 21d | 2026-07-21 | 2026-08-18 |  | 2026-08-04 | 2026-09-01 | 21d | 0d |  |  |  | 168h |
| 48 | 1.3.12.1 | Проведение AB-тестов исследований - оценка удовлетворения критериев |  | 20d | 2026-07-21 | 2026-08-17 | 12, 9, 42 | 2026-08-04 | 2026-08-31 | 20d | 0d |  |  | Продуктовый аналитик пилот | 160h |
| 49 | 1.3.12.2 | Приемка формального решения о целесообразности |  | 1d | 2026-08-18 | 2026-08-18 | 48, 46, 45 | 2026-09-01 | 2026-09-01 | 1d | 0d |  |  | Аралов | 8h |
| 50 | 1.3.13 | **Подготовка проекта по основному внедрению** |  | 40d | 2026-06-16 | 2026-08-10 |  | 2026-05-12 | 2026-08-10 | 64d | 6d |  |  |  | 600h |
| 51 | 1.3.13.1 | Проработка архитектуры взаимодействия Trisigma с инфраструктурой ТУТУ |  | 20d | 2026-06-16 | 2026-07-13 | 32 | 2026-06-16 | 2026-07-13 | 20d | 6d | 0d |  | Малый, Гладких, Попков, Консультации Илья, Скоморохов М, Цыба Л. | 160h |
| 52 | 1.3.13.2 | Уточнение требований к сайзингу |  | 20d | 2026-07-14 | 2026-08-10 | 51 | 2026-07-14 | 2026-08-10 | 20d | 6d |  |  | Малый, Гладких, Попков, Консультации Илья, Скоморохов М, Цыба Л. | 160h |
| 53 | 1.3.13.3 | Уточнение оценок по подключению SDK от продуктов |  | 20d | 2026-06-22 | 2026-07-17 | 37 | 2026-06-22 | 2026-07-17 | 20d | 22d |  |  | Разработчик пилот | 160h |
| 54 | 1.3.13.4 | Уточнение оценок по доработке SDK от Попков/Гладких |  | 10d | 2026-07-06 | 2026-07-17 | 39 | 2026-07-06 | 2026-07-17 | 10d | 17d | 0d |  | Попков/Гладких пилот | 80h |
| 55 | 1.3.13.5 | Подготовка проектной документации |  | 5d | 2026-07-20 | 2026-07-24 | 54 | 2026-07-20 | 2026-07-24 | 5d | 17d |  | start no earlier than 2026-05-12 | Ткаченко | 40h |
| 56 | 1.3.14 | Исследования завершены, решение принято, проектные документы на внедрение выполнены | milestone | 0d | 2026-08-18 | 2026-08-18 | 50, 49 | 2026-09-01 | 2026-09-01 | 0d | 0d |  |  |  |  |
| 57 | 1.3.15 | 10% Резерв по времени ( Управленческий резерв, неточности оценки, несоблюдение договоренностей , синхронизация работ) |  | 4d | 2026-08-19 | 2026-08-24 | 56 | 2026-09-02 | 2026-09-07 | 4d | 0d |  |  | Ткаченко | 32h |

Notes:
- 29: Text2: Интегрировать Configurator и Frontend с корпоративным IdP/SSO, настроить роли пользователей и сервисных учёток, проверить вход аналитика и администратора
- 30: Text2: Подключить мониторинг, логи, алерты
- 32: Text2: Создать тестовый эксперимент, опубликовать конфиг, запросить группу через Splitter, убедиться в появлении события в ClickHouse, дождаться полного расчёта эксперимента и открыть результат в UI
- 37: Text2: Установка sdk, подключение экспериментов в коде при условии, что функционал уже есть
