# Антибот внедрение Отели + исследование внедрение вертикали 260925 - для расчетов загрузки

Schedule from MS Project, 2026-09-28 to 2027-05-18.

## Calendars

- Стандартный: Mon-Fri 09:00-13:00, 14:00-18:00; Sat-Sun off. Exceptions (off unless hours are given): 2026-11-04 (4 нояб 26), 2026-12-31 (31 дек 26), 2027-01-01 to 2027-01-10 (нг2027), 2027-02-22 to 2027-02-23 (фев23), 2027-03-08 (мар8), 2027-05-03 (май3), 2027-05-10 (май10).

## Resources

| Resource |
| --- |
| Жиров |
| Ткаченко |
| Малый |
| Data Engineer |
| Разработчик |
| Продуктовый аналитик |
| Юрченко Илья |
| Mobile Core |
| Гладких |
| Котики |
| Администраторы (АДД) |
| ПА вертикалей |
| Специалист2 |
| Специалист1 |
| Продуктовые аналитики (все платформы) |
| Найм |

## Schedule

| ID | WBS | Task | Type | Duration | Start | Finish | Predecessors | Total slack | Free slack | Constraint | Resources | Work | Text2 |
| --- | --- | --- | --- | --- | --- | --- | --- | --- | --- | --- | --- | --- | --- |
| 1 | 1 | **Доработки АБ-платформы ТУТУ до Trisigma - оценка** |  | 154d | 2026-09-28 | 2027-05-18 |  | 0d |  |  |  | 1915.2h | https://dom.tutu.ru/pages/viewpage.action?pageId=514903239 |
| 2 | 1.1 | Старт работ согласован | milestone | 0d | 2026-09-28 | 2026-09-28 |  | 0d |  | start no earlier than 2026-09-28 |  |  |  |
| 3 | 1.2 | Подготовка, выделение ресурсов, синхронизация планов и запуск проекта |  | 5d | 2026-09-28 | 2026-10-02 | 2 | 0d |  |  |  |  |  |
| 4 | 1.3 | **Интеграция отчетности в AB-кампанию** |  | 41d | 2026-10-05 | 2026-12-01 | 3 | 0d |  |  |  | 192.8h |  |
| 5 | 1.3.1 | Отчет как часть страницы кампании |  | 5d | 2026-10-05 | 2026-10-09 |  | 0d |  |  | Гладких [70%] | 28h |  |
| 6 | 1.3.2 | Преконфигурация анализа при заведении теста |  | 7d | 2026-10-12 | 2026-10-20 | 5 | 0d |  |  | Гладких [70%] | 39.2h |  |
| 7 | 1.3.3 | Автоматический отчет по результатам теста |  | 7d | 2026-10-21 | 2026-10-29 | 6 | 0d |  |  | Гладких [70%] | 39.2h |  |
| 8 | 1.3.4 | Единая воронка и другие упрощения интерфейса |  | 6d | 2026-10-30 | 2026-11-09 | 7 | 16d |  |  | Гладких [70%] | 33.6h |  |
| 9 | 1.3.5 | Мониторинг подневной/накопительной динамики метрик |  | 12d | 2026-10-30 | 2026-11-17 | 7 | 0d |  |  | Найм [30%] | 28.8h |  |
| 10 | 1.3.6 | Дизайн AB-теста внутри платформы |  | 10d | 2026-11-18 | 2026-12-01 | 9 | 0d |  |  | Найм [30%] | 24h |  |
| 11 | 1.4 | Тестирование и приемка результатов |  | 10d | 2026-12-02 | 2026-12-15 | 4 | 98d |  |  | Продуктовые аналитики (все платформы); Гладких [50%] | 120h |  |
| 12 | 1.5 | **Улучшение расчетов** |  | 4d | 2026-12-02 | 2026-12-07 | 4 | 0d |  |  |  | 22.4h |  |
| 13 | 1.5.1 | CUPED и другие методы снижения дисперсии |  | 4d | 2026-12-02 | 2026-12-07 |  | 0d |  |  | Гладких [70%] | 22.4h |  |
| 14 | 1.6 | Тестирование и приемка результатов |  | 10d | 2026-12-08 | 2026-12-21 | 12 | 94d |  |  | Продуктовые аналитики (все платформы); Гладких [50%] | 120h |  |
| 15 | 1.7 | **Расширение возможностей сплитования** |  | 31d | 2026-12-08 | 2027-01-28 | 12 | 0d |  |  |  | 269.6h |  |
| 16 | 1.7.1 | Механика слоёв |  | 23d | 2026-12-08 | 2027-01-18 |  | 13d | 0d |  | Гладких [70%] | 128.8h |  |
| 17 | 1.7.2 | Механика холдаута (Глобальные Контрольные группы) |  | 8d | 2027-01-19 | 2027-01-28 | 16 | 13d | 0d |  | Гладких [70%] | 44.8h |  |
| 18 | 1.7.3 | Сплитование по разным id |  | 5d | 2026-12-08 | 2026-12-14 |  | 0d |  |  | Найм | 40h |  |
| 19 | 1.7.4 | Сегментная раздача групп теста |  | 7d | 2026-12-15 | 2026-12-23 | 18 | 0d |  |  | Найм | 56h |  |
| 20 | 1.8 | Тестирование и приемка результатов |  | 10d | 2027-01-29 | 2027-02-11 | 15, 17, 19 | 13d |  |  | Продуктовые аналитики (все платформы); Гладких [50%] | 120h |  |
| 21 | 1.9 | **Дополнительные подходы к принятию решений** |  | 10d | 2026-12-24 | 2027-01-15 | 19 | 0d |  |  |  | 80h |  |
| 22 | 1.9.1 | Байесовский анализ в отчетах |  | 10d | 2026-12-24 | 2027-01-15 |  | 0d |  |  | Найм | 80h |  |
| 23 | 1.10 | Тестирование и приемка результатов |  | 10d | 2027-01-18 | 2027-01-29 | 21 | 72d |  |  | Продуктовые аналитики (все платформы); Найм [50%] | 120h |  |
| 24 | 1.11 | **Другие доработки** |  | 17d | 2027-01-18 | 2027-02-09 | 21 | 0d |  |  |  | 136h |  |
| 25 | 1.11.1 | Метрики, разрезы и их пресеты как отдельная сущность |  | 7d | 2027-01-18 | 2027-01-26 |  | 0d |  |  | Найм | 56h |  |
| 26 | 1.11.2 | Условные списки id для выборочного таргетинга кампаний |  | 10d | 2027-01-27 | 2027-02-09 | 25 | 0d |  |  | Найм | 80h |  |
| 27 | 1.12 | Комплексное тестирование и приемка результатов |  | 15d | 2027-02-10 | 2027-03-04 | 24 | 0d |  |  | Продуктовые аналитики (все платформы); Гладких [50%] | 180h |  |
| 28 | 1.13 | Резерв 20% |  | 30d | 2027-03-05 | 2027-04-16 | 27, 20 | 0d |  |  |  |  |  |
| 29 | 1.14 | Отпуска команды, прочие нестыковки графиков |  | 20d | 2027-04-19 | 2027-05-18 | 28 | 0d |  |  |  |  |  |
| 30 | 1.15 | Методологическая поддержка проекта (5%) аналитик |  | 154d | 2026-09-28 | 2027-05-18 | 2 | 0d |  |  | Продуктовые аналитики (все платформы) [5%] | 61.6h |  |
| 31 | 1.16 | Аналитический надзор за проектом 25% |  | 154d | 2026-09-28 | 2027-05-18 | 2 | 0d |  |  | Малый [25%] | 308h |  |
| 32 | 1.17 | Управление проектом 15% |  | 154d | 2026-09-28 | 2027-05-18 | 2 | 0d |  |  | Ткаченко [15%] | 184.8h |  |
| 33 | 1.18 | Проект завершен | milestone | 0d | 2027-05-18 | 2027-05-18 | 29 | 0d |  |  |  |  |  |
