# Антибот внедрение Отели + исследование внедрение вертикали 260925 - для расчетов загрузки

Schedule from MS Project, 2026-03-30 to 2026-08-28, A marks actual dates.

## Calendars

- Стандартный: Mon-Fri 09:00-13:00, 14:00-18:00; Sat-Sun off. Exceptions (off unless hours are given): 2026-05-01 (1 мая 26), 2026-05-08 09:00-13:00, 14:00-17:00 (8 мая короткий), 2026-05-11 (9 мая 26), 2026-06-12 (12 июня 26).

## Resources

| Resource |
| --- |
| Жиров |
| Платформа аналитики |
| SEO |
| Отели |
| Аралов |
| DS (аналитик с ML) |
| СА проекты |
| Криворотов |
| Ткаченко |
| Аналитик СКД |
| Безверхов |
| Белов |
| DataTeam |
| Пляскин |
| Тим-лид DataTeam |
| Середа |
| Хусаинова |
| Дашкевич |
| ПХусаинова |
| Инфраструктура DataTeam |
| Тимофеев |
| Котельникова |
| Сальникова |
| Бичев |
| Галашов |
| Денис Малый, продакты Авиа и горизонталей, аналитики Авиа и горизонталей |
| Продакты Авиа и горизонталей |
| Денис Малый |
| Денис Малый, аналитики Авиа и горизонталей |
| Денис Малый, Юрий Гладких |
| Денис Малый, продакты бизнес-юнитов |
| Денис Малый, Вера Белоярская, Павел Пляскин |
| Денис Малый, Юрий Гладких, Никита Лысенко |
| Никита Лысенко |
| Юрий Гладких |
| Денис Малый, Илья Середа |
| Денис Малый, аналитики бизнес-юнитов |
| Денис Малый, продакты бизнес-юнитов, аналитики бизнес-юнитов |
| Денис Малый, data team |
| Денис Малый, Александр Жиров |
| Денис Малый, Елена Цветкова |
| Малый |
| Арут |
| Попков |
| DevOps |
| Data Engineer |
| Experiment Owner |
| Разработчик |
| TL |
| ПрПродукты |
| Продукты |
| Продуктовый аналитик |
| Разработчик пилот |
| Продуктовый аналитик пилот |
| DevOps пилот |
| Data Engineer пилот |
| Жиров пилот |
| DevOps Тимлид пилот |
| Скоморохов |
| Попков/Гладких |
| Попков/Гладких пилот |
| Работы DWH |
| Малый, Гладких, Попков, Консультации Илья |
| Малый, Гладких, Попков, Консультации Илья, Скоморохов М, Цыба Л. |
| Юрченко Илья |
| Mobile Core |

## Schedule

| ID | WBS | Task | Type | Duration | Start | Finish | Predecessors | Complete | Remaining | Baseline start | Baseline finish | Baseline duration | Total slack | Free slack | Constraint | Resources | Work | Actual work |
| --- | --- | --- | --- | --- | --- | --- | --- | --- | --- | --- | --- | --- | --- | --- | --- | --- | --- | --- |
| 1 | 1 | **Исследование и внедрение AB-платформы Trisigma** |  | 106.88d | 2026-03-30 A | 2026-08-28 |  | 33% | 71.79d | 2026-04-23 | 2026-09-07 | 94.88d | 0d |  |  |  | 3008h | 852h |
| 2 | 1.1 | Договор согласован, Вендор передал ПО и лицензии | milestone | 0d | 2026-04-27 A | 2026-04-27 A |  | 100% |  | 2026-04-27 | 2026-04-27 | 0d |  |  | start no earlier than 2026-04-27 |  |  |  |
| 3 | 1.2 | Согласован старт проектных работ Пилот, ресурсы выделены | milestone | 0d | 2026-03-30 A | 2026-04-22 A |  | 100% |  | 2026-04-23 | 2026-04-23 | 0d |  |  | start no earlier than 2026-03-30 |  |  |  |
| 4 | 1.3 | **POC Внедрение и пилотирование новой платформы AB-тестирования Trisigma** |  | 88.88d | 2026-04-23 A | 2026-08-28 |  | 33% | 59.7d | 2026-04-23 | 2026-09-07 | 94.88d | 0d |  |  |  | 3008h | 852h |
| 5 | 1.3.1 | **Работы по настройке аналитики (от ПА) - 2 продукта** |  | 43.88d | 2026-04-23 A | 2026-06-26 |  | 76% | 10.45d | 2026-04-23 | 2026-07-09 | 52.88d | 20d |  |  |  | 360h | 280h |
| 6 | 1.3.1.1 | Описание метрик в метротеке |  | 22d | 2026-04-23 A | 2026-05-27 A | 3 | 100% |  | 2026-04-23 | 2026-04-28 | 4d |  |  |  | Продуктовый аналитик пилот | 176h | 176h |
| 7 | 1.3.1.2 | Отпуска команды |  | 4d | 2026-05-27 A | 2026-06-02 A | 6 | 100% |  |  |  |  |  |  |  | Продуктовый аналитик пилот | 32h | 32h |
| 8 | 1.3.1.3 | Адаптация и обучение (1 день) |  | 2d | 2026-06-02 A | 2026-06-04 A | 6, 7 | 100% |  | 2026-07-02 | 2026-07-03 | 2d |  |  |  | Продуктовый аналитик пилот | 16h | 16h |
| 9 | 1.3.1.4 | Продготовка списка вопросов по итогу обучения |  | 2d | 2026-06-04 A | 2026-06-08 A | 8 | 100% |  |  |  |  |  |  |  | Денис Малый; Продуктовый аналитик пилот | 32h | 32h |
| 10 | 1.3.1.5 | Повторное обучение по списку вопросов |  | 1d | 2026-06-10 A | 2026-06-10 A | 9 | 100% |  |  |  |  |  |  | start no earlier than 2026-06-10 | Денис Малый; Продуктовый аналитик пилот | 16h | 16h |
| 11 | 1.3.1.6 | Занесение метрик в Trisigma (bitbucket) |  | 9d | 2026-06-11 A | 2026-06-24 | 8, 26, 10 | 11% | 8d | 2026-07-06 | 2026-07-07 | 2d | 20d | 0d |  | Продуктовый аналитик пилот | 72h | 8h |
| 12 | 1.3.1.7 | Настройка платформы под свой продукт (2 дня) |  | 2d | 2026-06-25 | 2026-06-26 | 11, 43 |  |  | 2026-07-08 | 2026-07-09 | 2d | 20d |  |  | Продуктовый аналитик пилот | 16h |  |
| 13 | 1.3.2 | **Исследование и решение (PoC)** |  | 41d | 2026-04-23 A | 2026-06-24 |  | 35% | 26.5d | 2026-04-23 | 2026-04-29 | 5d | 7.88d |  |  |  | 328h | 116h |
| 14 | 1.3.2.1 | Выявление и согласование критериев успешности PoC |  | 41d | 2026-04-23 A | 2026-06-24 | 3 | 35% | 26.5d | 2026-04-23 | 2026-04-29 | 5d | 7.88d | 0d |  | Малый | 328h | 116h |
| 15 | 1.3.2.2 | Объем тестовых работ для PoC определен | milestone | 0d | 2026-06-24 A | 2026-06-24 | 14 | 50% | 0d | 2026-04-29 | 2026-04-29 | 0d | 7.88d |  |  |  |  |  |
| 16 | 1.3.3 | **Установка базовой инфраструктуры** |  | 26.88d | 2026-04-23 A | 2026-06-02 A |  | 100% |  | 2026-04-23 | 2026-05-07 | 10d |  |  |  |  | 192h | 192h |
| 17 | 1.3.3.1 | 1.0.Согласование архитектуры на пилот |  | 19d | 2026-04-23 A | 2026-05-22 A | 3 | 100% |  | 2026-04-23 | 2026-04-29 | 5d |  |  |  | Попков/Гладких пилот | 152h | 152h |
| 18 | 1.3.3.2 | 1.1 Подготовка registry и Kubernetes runtime |  | 3d | 2026-04-30 A | 2026-05-05 A | 2, 17 | 100% |  | 2026-04-30 | 2026-05-05 | 3d |  |  |  | Попков/Гладких пилот | 24h | 24h |
| 19 | 1.3.3.3 | 1.2 Подготовка внешних зависимостей |  | 2d | 2026-05-06 A | 2026-05-07 A | 18 | 100% |  | 2026-05-06 | 2026-05-07 | 2d |  |  |  | Попков/Гладких пилот | 16h | 16h |
| 20 | 1.3.3.4 | Уcтранение проблем с Clickhouse (особенности Trisigma ) |  | 7d | 2026-05-25 A | 2026-06-02 A |  | 100% |  |  |  |  |  |  | start no earlier than 2026-05-25 |  |  |  |
| 21 | 1.3.4 | **Установка аналитических сервисов** |  | 46d | 2026-05-12 A | 2026-07-15 |  | 50% | 23d | 2026-05-12 | 2026-06-05 | 19d | 31d |  |  |  | 336h | 168h |
| 22 | 1.3.4.1 | Вендор выпустил релиз под наши нюансы развертыванию | milestone | 0d | 2026-05-19 A | 2026-05-19 A |  | 100% |  |  |  |  |  |  | finish no earlier than 2026-05-19 |  |  |  |
| 23 | 1.3.4.2 | 2.1 Развёртывание Hive Metastore, Trino и базовых каталогов |  | 5d | 2026-05-12 A | 2026-05-18 A | 19 | 100% |  | 2026-05-12 | 2026-05-18 | 5d |  |  | start no earlier than 2026-05-12 | Работы DWH | 40h | 40h |
| 24 | 1.3.4.3 | 2.1 Развёртывание Hive Metastore, Trino и базовых каталогов |  | 2d | 2026-05-19 A | 2026-05-20 A | 23 | 100% |  | 2026-05-19 | 2026-05-20 | 2d |  |  |  | Попков/Гладких пилот | 16h | 16h |
| 25 | 1.3.4.4 | 2.2 Подключение бизнес-данных, схем и прав доступа в Trino |  | 2d | 2026-06-15 A | 2026-06-16 A | 24, 11FS-1d | 100% |  | 2026-05-21 | 2026-05-22 | 2d |  |  |  | Попков/Гладких пилот | 16h | 16h |
| 26 | 1.3.4.5 | Анализ документации вендора и проверка по заведению метрики в bitbucket |  | 12d | 2026-05-21 A | 2026-06-05 A | 24 | 100% |  |  |  |  |  |  |  | Попков/Гладких пилот | 96h | 96h |
| 27 | 1.3.4.6 | 2.3 Подготовка данных UW для Trisigma (решение проблем с форматами данных для UW) |  | 20d | 2026-06-17 | 2026-07-14 | 25, 22, 20 |  |  | 2026-05-25 | 2026-06-05 | 10d | 31d | 0d |  | Попков/Гладких пилот | 160h |  |
| 28 | 1.3.4.7 | Проверка что данные появились в UW |  | 1d | 2026-07-15 | 2026-07-15 | 27 |  |  |  |  |  | 31d | 0d |  | Попков/Гладких пилот | 8h |  |

Notes:
- 11: Text2: с 15.05.26 возможно занесение метрик
- 17: Text2: Согласовать то, что будет приниматься в конце и консультации Илья
- 18: Text2: Создать container registry клиента, загрузить туда release-образы Trisigma и проверить, что Kubernetes может их вытягивать; настроить namespace'ы, service account'ы, ingress/TLS, механизм доставки секретов, storage class'ы и сетевые правила между сервисам
- 19: Text2: Создать отдельные PostgreSQL БД для Configurator, Splitter, Airflow и Hive Metastore, выделить Redis для Configurator и Airflow, подготовить ClickHouse и S3-совместимые бакеты
- 24: Text2: Установить Hive Metastore и Trino, подключить PostgreSQL и S3 credentials, настроить каталоги iceberg, hive и clickhouse, проверить сохранение метаданных и доступ к Hive Metastore, S3 и ClickHouse
- 25: Text2: Создать JDBC-каталог к клиентской БД, открыть сетевой доступ, завести read-only/service account, проверить каталоги и принятые префиксы для Iceberg/Hive/ClickHouse, создать рабочие схемы в каталоге клиента для аналитики и служебных данных, настроить серви
- 27: Text2: проверка после тестов А-А

| ID | WBS | Task | Type | Duration | Start | Finish | Predecessors | Complete | Remaining | Baseline start | Baseline finish | Baseline duration | Total slack | Free slack | Constraint | Resources | Work | Actual work |
| --- | --- | --- | --- | --- | --- | --- | --- | --- | --- | --- | --- | --- | --- | --- | --- | --- | --- | --- |
| 29 | 1.3.5 | **Установка прикладных сервисов** |  | 12d | 2026-05-20 A | 2026-06-04 A |  | 100% |  | 2026-06-08 | 2026-06-18 | 8d |  |  |  |  | 32h | 32h |
| 30 | 1.3.5.1 | 3.1 Развёртывание Airflow |  | 1d | 2026-05-20 A | 2026-05-20 A | 23, 22 | 100% |  | 2026-06-08 | 2026-06-09 | 2d |  |  |  | Попков/Гладких пилот | 8h | 8h |
| 31 | 1.3.5.2 | 3.2 Развёртывание Configurator |  | 1d | 2026-05-21 A | 2026-05-21 A | 30 | 100% |  | 2026-06-10 | 2026-06-11 | 2d |  |  |  | Попков/Гладких пилот | 8h | 8h |
| 32 | 1.3.5.3 | Получить SDK от вендора |  | 7d | 2026-05-25 A | 2026-06-02 A |  | 100% |  |  |  |  |  |  | start no earlier than 2026-05-25 |  |  |  |
| 33 | 1.3.5.4 | 3.3 Развёртывание Splitter |  | 1d | 2026-05-22 A | 2026-05-22 A | 31 | 100% |  | 2026-06-15 | 2026-06-16 | 2d |  |  |  | Попков/Гладких пилот | 8h | 8h |
| 34 | 1.3.5.5 | Тестирование Splitter |  | 2d | 2026-06-03 A | 2026-06-04 A | 33, 32 | 100% |  |  |  |  |  |  |  |  |  |  |
| 35 | 1.3.5.6 | 3.4 Развёртывание Frontend и внешних endpoint'ов |  | 1d | 2026-05-25 A | 2026-05-25 A | 33 | 100% |  | 2026-06-17 | 2026-06-18 | 2d |  |  |  | Попков/Гладких пилот | 8h | 8h |
| 36 | 1.3.6 | **Интеграции сервисов** |  | 23d | 2026-05-26 A | 2026-06-26 |  | 22% | 17.89d | 2026-06-19 | 2026-06-25 | 5d | 5d |  |  |  | 72h | 16h |
| 37 | 1.3.6.1 | 4.1 Настройка аутентификации и ролей |  | 2d | 2026-05-26 A | 2026-05-27 A | 35 | 100% |  | 2026-06-19 | 2026-06-22 | 2d |  |  |  | Попков/Гладких пилот | 16h | 16h |
| 38 | 1.3.6.2 | 4.2 Настройка эксплуатационного контура |  | 7d | 2026-06-18 | 2026-06-26 | 47 |  |  | 2026-06-23 | 2026-06-25 | 3d | 5d |  |  | Попков/Гладких пилот | 56h |  |
| 39 | 1.3.7 | **Проверка и ввод в эксплуатацию** |  | 20d | 2026-06-05 | 2026-07-03 |  |  |  | 2026-06-26 | 2026-06-29 | 2d | 0d |  |  |  | 320h |  |
| 40 | 1.3.7.1 | 5.1 Проведение технического smoke test |  | 20d | 2026-06-05 | 2026-07-03 | 34 |  |  | 2026-06-26 | 2026-06-29 | 2d | 0d |  |  | Продуктовый аналитик пилот; Денис Малый | 320h |  |
| 41 | 1.3.8 | **Настройка системы внутри платформы** |  | 2d | 2026-06-09 A | 2026-06-10 A |  | 100% |  | 2026-06-30 | 2026-07-01 | 2d |  |  |  |  | 16h | 16h |
| 42 | 1.3.8.1 | 6.1 Заведение роутов, проверка, корретировка CPU, RAM |  | 2d | 2026-06-09 A | 2026-06-10 A | 34 | 100% |  | 2026-06-30 | 2026-07-01 | 2d |  |  |  | Попков/Гладких пилот | 16h | 16h |
| 43 | 1.3.8.2 | Платформа trisigma настроена и готова к заведению метрик | milestone | 0d | 2026-06-10 A | 2026-06-10 A | 42 | 100% |  | 2026-07-01 | 2026-07-01 | 0d |  |  |  |  |  |  |
| 44 | 1.3.9 | Поддержка Гладких Ю. |  | 5d | 2026-06-22 | 2026-06-26 |  |  |  |  |  |  | 5d | 0d | start no earlier than 2026-06-22 | Попков/Гладких пилот | 40h |  |
| 45 | 1.3.10 | Отпуск Гладких Ю. |  | 10d | 2026-06-29 | 2026-07-10 | 44 |  |  |  |  |  | 5d | 3d | start no earlier than 2026-06-29 | Попков/Гладких пилот | 80h |  |
| 46 | 1.3.11 | **Проведение 3х реальных экспериментов для оценки системы** |  | 31d | 2026-06-11 A | 2026-07-24 |  | 9% | 28.18d | 2026-07-02 | 2026-08-03 | 23d | 25d |  |  |  | 392h | 32h |
| 47 | 1.3.11.1 | 7.1 Подготовка go sdk вендора к сервисам двух продуктов (Отели и Авиа) |  | 4d | 2026-06-11 A | 2026-06-17 A | 42, 32 | 100% |  | 2026-07-02 | 2026-07-03 | 2d |  |  |  | Попков/Гладких пилот | 32h | 32h |
| 48 | 1.3.11.2 | Определиться с 3мя А-А тестами в Отелях и Авиа и прийти на встречу |  | 4d | 2026-06-24 | 2026-06-29 |  |  |  |  |  |  | 4d |  | start no earlier than 2026-06-24 | Продуктовый аналитик пилот | 32h |  |
| 49 | 1.3.11.3 | 7.1 Подготовка front sdk вендора к сервисам двух продуктов (Отели и Авиа) |  | 11d | 2026-06-11 | 2026-06-26 | 42 |  |  |  |  |  | 5d |  | start no earlier than 2026-06-11 | Юрченко Илья | 88h |  |
| 50 | 1.3.11.4 | 7.1 Подключение go sdk вендора к сервисам двух (Отели и Авиа) продуктов |  | 9d | 2026-06-29 | 2026-07-09 | 47 |  |  | 2026-07-06 | 2026-07-09 | 4d | 0d |  | start no earlier than 2026-06-29 | Разработчик пилот | 72h |  |
| 51 | 1.3.11.5 | 7.2 Проведение 3х A-A-B экспериментов на продукте |  | 4d | 2026-07-06 | 2026-07-09 | 15, 50FS-4d, 38, 49, 48 |  |  | 2026-07-20 | 2026-07-22 | 3d | 0d |  |  | Разработчик пилот | 32h |  |
| 52 | 1.3.11.6 | Доработка функционала для работы Trisigma (вкладка расчет функционала) |  | 3d | 2026-07-10 | 2026-07-14 | 51 |  |  | 2026-07-06 | 2026-07-17 | 10d | 0d |  |  | Попков/Гладких пилот | 24h |  |
| 53 | 1.3.11.7 | Проверка на критерии приемки Юры |  | 1d | 2026-07-16 | 2026-07-16 | 51, 28, 45 |  |  |  |  |  | 31d |  |  | Попков/Гладких пилот | 8h |  |
| 54 | 1.3.11.8 | 7.3 Подведение итогов по экспериментам, сравнение результатов |  | 3d | 2026-07-15 | 2026-07-17 | 52 |  |  | 2026-07-23 | 2026-07-27 | 3d | 0d |  |  | Продуктовый аналитик пилот | 24h |  |
| 55 | 1.3.11.9 | 7.4 Оценка метрик, доработки вовремя и после запуска, помощь в сравнении результатов, подведение технических итогов |  | 5d | 2026-07-20 | 2026-07-24 | 54, 45 |  |  | 2026-07-28 | 2026-08-03 | 5d | 0d |  |  | Малый; Попков/Гладких пилот | 80h |  |

Notes:
- 30: Text2: Установить Airflow с CeleryExecutor, подключить metadata DB и внешний Redis / Valkey broker, настроить S3-бакеты для логов и DAG-конфигов, развернуть configs-uploader, проверить базовую работоспособность и готовность принимать DAG-конфиги
- 31: Text2: Установить Helm-чарт, выполнить PostgreSQL-миграции и миграции ClickHouse, настроить связи с Trino и Airflow
- 33: Text2: Установить Helm-чарт, выполнить миграции, настроить интеграцию с Configurator через пару CONFIGURATION_TOKEN/SPLITTER_TOKEN, включить watchers конфигов и override'ов, проверить getFeaturesByTag и отправку событий
- 35: Text2: Установить Frontend, опубликовать UI и API endpoint'ы, связать frontend с Configurator и проверить доступ аналитиков к интерфейсу
- 37: Text2: На этапе пилота упрощенная ролевая модель - все администраторы (управление АБ-компаниями)
- 38: Text2: Не блокирует - после SDK
- 40: Text2: Фоновая непрерывная работа
- 42: Text2: Где развернута Trisigma (внутри IT платформы)
- 47: Text2: Установка sdk, подключение экспериментов в коде при условии, что функционал уже есть
- 50: Text2: Нужен frontend и backend от продуктов
- 52: Text2: Донастройка функционала по табичке GDOCS сравнение
- 53: Text2: По критериям приемки от Дениса 1

| ID | WBS | Task | Type | Duration | Start | Finish | Predecessors | Baseline start | Baseline finish | Baseline duration | Total slack | Free slack | Constraint | Resources | Work | Text2 |
| --- | --- | --- | --- | --- | --- | --- | --- | --- | --- | --- | --- | --- | --- | --- | --- | --- |
| 56 | 1.3.12 | **Подведение итогов тестирования платформы PoC** |  | 3d | 2026-07-16 | 2026-07-20 |  | 2026-07-24 | 2026-07-28 | 3d | 24d |  |  |  | 32h |  |
| 57 | 1.3.12.1 | 8.1 Подведение итогов PoC, сравнение ожиданий и реальности, оформление выводов |  | 2d | 2026-07-16 | 2026-07-17 | 40, 52FS+1d | 2026-07-24 | 2026-07-27 | 2d | 24d | 0d |  | Малый | 16h |  |
| 58 | 1.3.12.2 | 8.2 Принятие решения по полноценному тестированию |  | 1d | 2026-07-20 | 2026-07-20 | 57 | 2026-07-28 | 2026-07-28 | 1d | 24d |  |  | Малый | 8h |  |
| 59 | 1.3.12.3 | 8.3 Принятие решений по архитектуре, корректировка планов полного внедрения |  | 1d | 2026-07-20 | 2026-07-20 | 57, 17 | 2026-07-28 | 2026-07-28 | 1d | 24d |  |  | Малый, Гладких, Попков, Консультации Илья | 8h |  |
| 60 | 1.3.13 | **Проведение тестовых AB-компаний на согласованных вертикалях (Авиа и Отели), фиксация решения** |  | 21d | 2026-07-27 | 2026-08-24 |  | 2026-08-04 | 2026-09-01 | 21d | 0d |  |  |  | 168h |  |
| 61 | 1.3.13.1 | Проведение AB-тестов исследований - оценка удовлетворения критериев |  | 20d | 2026-07-27 | 2026-08-21 | 15, 12, 55 | 2026-08-04 | 2026-08-31 | 20d | 0d |  |  | Продуктовый аналитик пилот | 160h |  |
| 62 | 1.3.13.2 | Приемка формального решения о целесообразности |  | 1d | 2026-08-24 | 2026-08-24 | 61, 59, 58 | 2026-09-01 | 2026-09-01 | 1d | 0d |  |  | Аралов | 8h |  |
| 63 | 1.3.14 | **Подготовка проекта по основному внедрению** |  | 48d | 2026-06-18 | 2026-08-24 |  | 2026-05-12 | 2026-08-10 | 64d | 0d |  |  |  | 608h |  |
| 64 | 1.3.14.1 | Проработка архитектуры взаимодействия Trisigma с инфраструктурой ТУТУ |  | 16d | 2026-07-06 | 2026-07-27 | 40 | 2026-06-16 | 2026-07-13 | 20d | 0d |  |  | Малый, Гладких, Попков, Консультации Илья, Скоморохов М, Цыба Л. | 128h |  |
| 65 | 1.3.14.2 | Проверка по критериям приемки Отели и Авиа |  | 5d | 2026-07-28 | 2026-08-03 | 64 |  |  |  | 15d |  |  | Продуктовый аналитик пилот | 40h | По критериям приемки от Дениса 2,3 |
| 66 | 1.3.14.3 | Уточнение требований к сайзингу |  | 20d | 2026-07-28 | 2026-08-24 | 64 | 2026-07-14 | 2026-08-10 | 20d | 0d |  |  | Малый, Гладких, Попков, Консультации Илья, Скоморохов М, Цыба Л. | 160h |  |
| 67 | 1.3.14.4 | Уточнение оценок по подключению SDK от продуктов |  | 20d | 2026-06-18 | 2026-07-15 | 47 | 2026-06-22 | 2026-07-17 | 20d | 28d |  |  | Разработчик пилот | 160h |  |
| 68 | 1.3.14.5 | Уточнение оценок по доработке SDK от Попков/Гладких |  | 10d | 2026-07-15 | 2026-07-28 | 52, 17 | 2026-07-06 | 2026-07-17 | 10d | 14d | 0d |  | Попков/Гладких пилот | 80h |  |
| 69 | 1.3.14.6 | Подготовка проектной документации |  | 5d | 2026-07-29 | 2026-08-04 | 68 | 2026-07-20 | 2026-07-24 | 5d | 14d |  | start no earlier than 2026-05-12 | Ткаченко | 40h |  |
| 70 | 1.3.15 | Исследования завершены, решение принято, проектные документы на внедрение выполнены | milestone | 0d | 2026-08-24 | 2026-08-24 | 63, 62 | 2026-09-01 | 2026-09-01 | 0d | 0d |  |  |  |  |  |
| 71 | 1.3.16 | 10% Резерв по времени ( Управленческий резерв, неточности оценки, несоблюдение договоренностей , синхронизация работ) |  | 4d | 2026-08-25 | 2026-08-28 | 70 | 2026-09-02 | 2026-09-07 | 4d | 0d |  |  | Ткаченко | 32h |  |
